# Tesis

How a schedule from MS Project changed from version to version. A marks actual dates.

## Version 1 (saved 2026-07-20, file Tesis.mpp)

Note of the change: Agregar Tesis.mpp actualizada

| ID | WBS | Task | Duration | Start | Finish |
| --- | --- | --- | --- | --- | --- |
| 1 | 1 | **Tesis** | 188d? | 2026-04-15 | 2026-12-31 |
| 2 | 1.1 | **Ante Proyecto** | 19d? | 2026-04-15 | 2026-05-10 |
| 3 |  | Buscar Problemática | 3d | 2026-04-16 | 2026-04-20 |
| 4 |  | Definir idea de Proyecto | 3d | 2026-04-18 | 2026-04-21 |
| 5 |  | Definir objetivos | 3d | 2026-04-20 | 2026-04-22 |
| 6 |  | Definir metodología | 3d | 2026-04-22 | 2026-04-24 |
| 7 |  | Definir alcance y limitaciones | 2d | 2026-04-25 | 2026-04-26 |
| 8 |  | Definición del caso de estudio | 2d | 2026-04-26 | 2026-04-27 |
| 9 |  | Definir plan de trabajo | 1d | 2026-04-27 | 2026-04-27 |
| 10 |  | Elaborar propuesta cronograma | 2d | 2026-04-27 | 2026-04-28 |
| 11 |  | Elaborar informe de propuesta | 9d | 2026-04-29 | 2026-05-09 |
| 12 |  | Entregar informe de propuesta | 1d | 2026-05-10 | 2026-05-10 |
| 13 | 1.2 | **Investigación y correcciones** | 52d? | 2026-05-10 | 2026-07-20 |
| 14 |  | Correcciones del Informe anteproyecto | 5d | 2026-05-11 | 2026-05-15 |
| 15 |  | Definir backlog (Scrum) | 5d | 2026-05-11 | 2026-05-15 |
| 16 |  | Investigación de tecnologias detectoras de pantentes | 14d | 2026-05-13 | 2026-05-30 |
| 17 |  | Retroalimentación profesor guia | 1d | 2026-05-29 | 2026-05-29 |
| 18 |  | Comparacion de Versiones de YOLO | 5d | 2026-05-26 | 2026-05-31 |
| 19 |  | Investigación YOLOv8 aplicada a patentes | 3d | 2026-06-01 | 2026-06-03 |
| 20 |  | Justificación teórica de la elección de YOLOv12 para entornos con recursos limitados. | 5d | 2026-06-02 | 2026-06-06 |
| 21 |  | Busqueda de Dataset de patentes chilenas | 2d | 2026-06-04 | 2026-06-05 |
| 22 |  | Mejoramiento del estado del arte | 11d | 2026-06-01 | 2026-06-14 |
| 23 |  | Visita a terreno del estacionamiento | 1d | 2026-06-04 | 2026-06-04 |
| 24 |  | Cálculo del flujo vehicular | 1d | 2026-06-04 | 2026-06-04 |
| 25 |  | Analisis del lugar y mejor distribución de los vehiculos | 1d | 2026-06-05 | 2026-06-05 |
| 26 |  | Preparación de formato de informe | 36d | 2026-06-01 | 2026-07-20 |
| 27 | 1.3 | **Situación actual** | 21d? | 2026-06-22 | 2026-07-20 |
| 28 |  | Creación de repositorio GitHub para archivos de Trabajo de titulo | 1d | 2026-06-22 | 2026-06-22 |
| 29 |  | Definir que tecnologias usar | 16d | 2026-06-22 | 2026-07-12 |
| 30 |  | Análisis teórico del presupuesto de tiempo de ejecución | 3d | 2026-06-22 | 2026-06-24 |
| 31 |  | Justificación técnica de la tolerancia a fallos | 3d | 2026-06-24 | 2026-06-26 |
| 32 |  | Investigación del patrón de caracteres | 2d | 2026-06-25 | 2026-06-26 |
| 33 |  | Creación del diagrama de arquitectura física/lógica | 6d | 2026-06-29 | 2026-07-05 |
| 34 |  | Diseño del modelo de contingencia Offline-First | 8d | 2026-07-01 | 2026-07-10 |
| 35 |  | Creación del diagrama Entidad-Relación conceptual para el almacenamiento centralizado y la réplica local reducida. | 3d | 2026-07-02 | 2026-07-05 |
| 36 |  | Redacción y priorización del Backlog de Producto (Scrum) que se ejecutará el próximo semestre. | 3d | 2026-07-06 | 2026-07-08 |
| 37 |  | Definición de los criterios de aceptación de imágenes | 6d | 2026-07-03 | 2026-07-10 |
| 38 |  | Correción de citaciones APA 7ma Edición | 7d | 2026-07-11 | 2026-07-20 |
| 39 |  | Preparacion Informe Final Titulo 1 | 16d | 2026-06-29 | 2026-07-20 |
| 40 | 1.4 | **Configuración de Entornos y Adquisición de Datos** | 13d | 2026-08-17 | 2026-09-02 |
| 41 |  | Balanceo de clases para patentes chilenas escasas. | 3d | 2026-08-17 | 2026-08-19 |
| 42 |  | Evaluación de herramientas de anotación para YOLOv12. | 2d | 2026-08-17 | 2026-08-18 |
| 43 |  | Configuración del entorno local con Docker, PostgreSQL y Node. | 6d | 2026-08-17 | 2026-08-22 |
| 44 |  | Captura fotográfica en terreno y web para el dataset base. | 13d | 2026-08-17 | 2026-09-02 |
| 45 |  | Etiquetado manual de bounding boxes en formato de texto. | 3d | 2026-08-24 | 2026-08-26 |
| 46 |  | Script para la partición del dataset en entrenamiento y test. | 5d | 2026-08-24 | 2026-08-28 |
| 47 |  | Implementación de pipeline OpenCV con CLAHE y redimensión. | 3d | 2026-08-31 | 2026-09-02 |
| 48 | 1.5 | **Core de IA y Base de Datos Local** | 16d | 2026-09-03 | 2026-09-24 |
| 49 |  | Investigación del impacto de tasa de aprendizaje y tamaño de batch en YOLOv12s. | 2d | 2026-09-03 | 2026-09-04 |
| 50 |  | Análisis de binarización de Otsu versus binarización adaptativa para OCR. | 2d | 2026-09-07 | 2026-09-08 |
| 51 |  | Configuración del script de entrenamiento de YOLOv12s en GPU. | 4d | 2026-09-08 | 2026-09-11 |
| 52 |  | Ejecución del entrenamiento del modelo base versión uno punto cero. | 4d | 2026-09-12 | 2026-09-16 |
| 53 |  | Módulo de inferencia en Python para placas estáticas. | 3d | 2026-09-14 | 2026-09-16 |
| 54 |  | Inicialización del esquema de base de datos SQLite en el borde. | 4d | 2026-09-21 | 2026-09-24 |
| 55 |  | Script controlador en Python para la base de datos SQLite. | 4d | 2026-09-21 | 2026-09-24 |
| 56 |  | Integración inicial de YOLOv12s con EasyOCR. | 2d | 2026-09-23 | 2026-09-24 |
| 57 | 1.6 | **Backend Centralizado y API REST** | 15d | 2026-09-25 | 2026-10-15 |
| 58 |  | Investigación de Seguridad en API REST y estrategia JWT para Edge-Cloud. | 2d | 2026-09-25 | 2026-09-26 |
| 59 |  | Concurrencia con FastAPI Async y Await para logs. | 2d | 2026-09-28 | 2026-09-29 |
| 60 |  | Creación del proyecto FastAPI con SQLAlchemy y Pydantic. | 11d | 2026-09-28 | 2026-10-11 |
| 61 |  | Migración del modelo relacional a la base de datos PostgreSQL. | 4d | 2026-09-29 | 2026-10-02 |
| 62 |  | Endpoints de la API para autenticación y roles de usuario. | 3d | 2026-10-01 | 2026-10-04 |
| 63 |  | Endpoints de la API para el CRUD de vehículos autorizados. | 3d | 2026-10-05 | 2026-10-07 |
| 64 |  | Endpoints de la API para la recepción de logs de inferencia. | 4d | 2026-10-05 | 2026-10-08 |
| 65 |  | Despliegue del backend en la nube mediante Render o AWS. | 5d | 2026-10-11 | 2026-10-15 |
| 66 | 1.7 | **Frontend (Panel Web) y Sincronización** | 15d | 2026-10-16 | 2026-11-05 |
| 67 |  | Investigación de Algoritmos de Exponential Backoff para la reconexión. | 1d | 2026-10-16 | 2026-10-16 |
| 68 |  | Análisis de Virtualización de listas en React para alta carga de datos. | 5d | 2026-10-17 | 2026-10-22 |
| 69 |  | Inicialización del proyecto React con Tailwind y rutas. | 6d | 2026-10-20 | 2026-10-27 |
| 70 |  | Vista de login y dashboard estadístico centralizado. | 3d | 2026-10-22 | 2026-10-26 |

| ID | WBS | Task | Duration | Start | Finish |
| --- | --- | --- | --- | --- | --- |
| 71 |  | Módulo en React para la gestión de vehículos matriculados. | 6d | 2026-10-26 | 2026-10-31 |
| 72 |  | Tabla en React para el historial de accesos en tiempo real. | 2d | 2026-10-30 | 2026-10-31 |
| 73 |  | Worker en Python para la sincronización asíncrona local y nube. | 3d | 2026-11-02 | 2026-11-04 |
| 74 |  | Script para la descarga periódica de la lista blanca. | 4d | 2026-11-02 | 2026-11-05 |
| 75 | 1.8 | **Integración y UI Local** | 12d? | 2026-11-06 | 2026-11-23 |
| 76 |  | Investigación y conversión del modelo YOLOv12s a formatos ONNX y TensorRT. | 2d | 2026-11-06 | 2026-11-07 |
| 77 |  | Análisis de métricas de usabilidad de interfaz en seguridad crítica. | 1d | 2026-11-09 | 2026-11-09 |
| 78 |  | Desarrollo de interfaz de usuario local en React para el operador del portón. | 3d | 2026-11-10 | 2026-11-12 |
| 79 |  | Desarrollo y conexión de interfaz local con streaming de video en OpenCV. | 8d | 2026-11-12 | 2026-11-22 |
| 80 |  | Desarrollo de lógica de negocio para validación en SQLite y apertura. | 4d | 2026-11-16 | 2026-11-19 |
| 81 |  | Desarrollo e integración total de interfaz local, IA, SQLite, API y Web. | 5d | 2026-11-17 | 2026-11-21 |
| 82 | 1.9 | **Pruebas** | 6d | 2026-11-23 | 2026-11-30 |
| 83 |  | Análisis estadístico de errores en caracteres del OCR. | 1d | 2026-11-23 | 2026-11-23 |
| 84 |  | Desarrollo y pruebas de carga concurrente en la API centralizada. | 6d | 2026-11-23 | 2026-11-29 |
| 85 |  | Desarrollo y pruebas de estrés con simulación de corte de internet offline. | 6d | 2026-11-23 | 2026-11-29 |
| 86 |  | Análisis y medición de la latencia total del pipeline en milisegundos. | 2d | 2026-11-26 | 2026-11-27 |
| 87 |  | Análisis y cálculo de matriz de confusión, precisión, recall y F1-Score. | 1d | 2026-11-28 | 2026-11-28 |
| 88 |  | Desarrollo, depuración y corrección de bugs críticos del sistema. | 6d | 2026-11-23 | 2026-11-30 |
| 89 | 1.10 | **Documentación Final** | 11d | 2026-11-30 | 2026-12-13 |
| 90 |  | Documentación y finalización del capítulo de resultados y discusión. | 3d | 2026-11-30 | 2026-12-02 |
| 91 |  | Documentación y redacción de conclusiones y trabajos futuros de la tesis. | 4d | 2026-12-01 | 2026-12-04 |
| 92 |  | Documentación de manual técnico de despliegue en la sección de anexos. | 6d | 2026-12-07 | 2026-12-13 |
| 93 |  | Revisión de formato según normas APA/IEEE y ortografía. | 3d | 2026-12-10 | 2026-12-13 |
| 94 |  | Entrega del prototipo funcional y del documento final de tesis. | 1d | 2026-12-13 | 2026-12-13 |

## Version 2 (saved 2026-07-20, file Tesis.xml)

Note of the change: Actualizar Tesis.mpp y Tesis.xml

Last finish stays 2026-12-31.

Changed:

| ID | Task | Duration |
| --- | --- | --- |
| 1 | **Tesis** | 188d? → 174d? |
| 2 | **Ante Proyecto** | 19d? → 18d? |
| 13 | **Investigación y correcciones** | 52d? → 51d? |
| 29 | Definir que tecnologias usar | 16d → 17d |
| 43 | Configuración del entorno local con Docker, PostgreSQL y Node. | 6d → 7d |
| 58 | Investigación de Seguridad en API REST y estrategia JWT para Edge-Cloud. | 2d → 3d |
| 68 | Análisis de Virtualización de listas en React para alta carga de datos. | 5d → 6d |
| 75 | **Integración y UI Local** | 12d? → 11d? |
| 76 | Investigación y conversión del modelo YOLOv12s a formatos ONNX y TensorRT. | 2d → 3d |
| 84 | Desarrollo y pruebas de carga concurrente en la API centralizada. | 6d → 7d |
| 85 | Desarrollo y pruebas de estrés con simulación de corte de internet offline. | 6d → 7d |
| 89 | **Documentación Final** | 11d → 10d |

## Version 3 (saved 2026-07-20, file Tesis.mpp)

Note of the change: Merge branch 'main' of https://github.com/BenjaminValdesValdes/Tesis

Last finish 2026-12-31 → 2026-12-14 (-17d). Complete tasks 0 → 32.

Changed:

| ID | Task | Start | Finish | Duration | Complete |
| --- | --- | --- | --- | --- | --- |
| 1 | **Tesis** | 2026-04-15 A | 2026-12-31 → 2026-12-14 (-17d) | 174d? → 175d? | 0% → 50% |
| 2 | **Ante Proyecto** |  | 2026-05-10 A | 18d? → 19d | 0% → 100% |
| 3 | Buscar Problemática | 2026-04-16 A | 2026-04-20 A |  | 0% → 100% |
| 4 | Definir idea de Proyecto | 2026-04-18 A | 2026-04-21 A |  | 0% → 100% |
| 5 | Definir objetivos | 2026-04-20 A | 2026-04-22 A |  | 0% → 100% |
| 6 | Definir metodología | 2026-04-22 A | 2026-04-24 A |  | 0% → 100% |
| 7 | Definir alcance y limitaciones | 2026-04-25 A | 2026-04-26 A |  | 0% → 100% |
| 8 | Definición del caso de estudio | 2026-04-26 A | 2026-04-27 A |  | 0% → 100% |
| 9 | Definir plan de trabajo | 2026-04-27 A | 2026-04-27 A |  | 0% → 100% |
| 10 | Elaborar propuesta cronograma | 2026-04-27 A | 2026-04-28 A |  | 0% → 100% |
| 11 | Elaborar informe de propuesta | 2026-04-29 A | 2026-05-09 A |  | 0% → 100% |
| 12 | Entregar informe de propuesta | 2026-05-10 A | 2026-05-10 A |  | 0% → 100% |
| 13 | **Investigación y correcciones** |  |  | 51d? → 52d | 0% → 99% |
| 14 | Correcciones del Informe anteproyecto | 2026-05-11 A | 2026-05-15 A |  | 0% → 100% |
| 15 | Definir backlog (Scrum) | 2026-05-11 A | 2026-05-15 A |  | 0% → 100% |
| 16 | Investigación de tecnologias detectoras de pantentes | 2026-05-13 A | 2026-05-30 A |  | 0% → 100% |
| 17 | Retroalimentación profesor guia | 2026-05-29 A | 2026-05-29 A |  | 0% → 100% |
| 18 | Comparacion de Versiones de YOLO | 2026-05-26 A | 2026-05-31 A |  | 0% → 100% |
| 19 | Investigación YOLOv8 aplicada a patentes | 2026-06-01 A | 2026-06-03 A |  | 0% → 100% |
| 20 | Justificación teórica de la elección de YOLOv12 para entornos con recursos limitados. | 2026-06-02 A | 2026-06-06 A |  | 0% → 100% |
| 21 | Busqueda de Dataset de patentes chilenas | 2026-06-04 A | 2026-06-05 A |  | 0% → 100% |
| 22 | Mejoramiento del estado del arte | 2026-06-01 A | 2026-06-14 A |  | 0% → 100% |
| 23 | Visita a terreno del estacionamiento | 2026-06-04 A | 2026-06-04 A |  | 0% → 100% |
| 24 | Cálculo del flujo vehicular | 2026-06-04 A | 2026-06-04 A |  | 0% → 100% |
| 25 | Analisis del lugar y mejor distribución de los vehiculos | 2026-06-05 A | 2026-06-05 A |  | 0% → 100% |
| 26 | Preparación de formato de informe | 2026-06-01 A |  |  | 0% → 97% |
| 27 | **Situación actual** | 2026-06-22 A |  | 21d? → 21d | 0% → 97% |
| 28 | Creación de repositorio GitHub para archivos de Trabajo de titulo | 2026-06-22 A | 2026-06-22 A |  | 0% → 100% |
| 29 | Definir que tecnologias usar | 2026-06-22 A | 2026-07-12 A | 17d → 16d | 0% → 100% |
| 30 | Análisis teórico del presupuesto de tiempo de ejecución | 2026-06-22 A | 2026-06-24 A |  | 0% → 100% |
| 31 | Justificación técnica de la tolerancia a fallos | 2026-06-24 A | 2026-06-26 A |  | 0% → 100% |
| 32 | Investigación del patrón de caracteres | 2026-06-25 A | 2026-06-26 A |  | 0% → 100% |
| 33 | Creación del diagrama de arquitectura física/lógica | 2026-06-29 A | 2026-07-05 A |  | 0% → 100% |
| 34 | Diseño del modelo de contingencia Offline-First | 2026-07-01 A | 2026-07-10 A |  | 0% → 100% |
| 35 | Creación del diagrama Entidad-Relación conceptual para el almacenamiento centralizado y la réplica local reducida. | 2026-07-02 A | 2026-07-05 A |  | 0% → 100% |
| 36 | Redacción y priorización del Backlog de Producto (Scrum) que se ejecutará el próximo semestre. | 2026-07-06 A | 2026-07-08 A |  | 0% → 100% |
| 37 | Definición de los criterios de aceptación de imágenes | 2026-07-03 A | 2026-07-10 A |  | 0% → 100% |
| 38 | Correción de citaciones APA 7ma Edición | 2026-07-11 A |  |  | 0% → 86% |
| 39 | Preparacion Informe Final Titulo 1 | 2026-06-29 A |  |  | 0% → 94% |
| 43 | Configuración del entorno local con Docker, PostgreSQL y Node. |  |  | 7d → 6d |  |
| 58 | Investigación de Seguridad en API REST y estrategia JWT para Edge-Cloud. |  |  | 3d → 2d |  |
| 68 | Análisis de Virtualización de listas en React para alta carga de datos. |  |  | 6d → 5d |  |
| 75 | **Integración y UI Local** |  |  | 11d? → 12d |  |
| 76 | Investigación y conversión del modelo YOLOv12s a formatos ONNX y TensorRT. |  |  | 3d → 2d |  |
| 84 | Desarrollo y pruebas de carga concurrente en la API centralizada. |  |  | 7d → 6d |  |
| 85 | Desarrollo y pruebas de estrés con simulación de corte de internet offline. |  |  | 7d → 6d |  |
| 89 | **Documentación Final** |  |  | 10d → 11d |  |

## Version 4 (saved 2026-07-24, file Tesis.mpp)

Note of the change: Merge branch 'main' of https://github.com/BenjaminValdesValdes/Tesis

Last finish stays 2026-12-14. Complete tasks 32 → 35.

Changed:

| ID | Task | Start | Finish | Duration | Complete |
| --- | --- | --- | --- | --- | --- |
| 1 | **Tesis** |  |  |  | 50% → 51% |
| 13 | **Investigación y correcciones** |  | 2026-07-20 A |  | 99% → 100% |
| 26 | Preparación de formato de informe |  | 2026-07-20 A |  | 97% → 100% |
| 27 | **Situación actual** |  |  |  | 97% → 100% |
| 38 | Correción de citaciones APA 7ma Edición |  | 2026-07-20 A |  | 86% → 100% |
| 39 | Preparacion Informe Final Titulo 1 | 2026-06-29 A → 2026-07-06 A (+7d) | 2026-07-20 → 2026-07-24 A (+4d) | 16d → 15d | 94% → 100% |

## Version 5 (saved 2026-07-24, file Tesis.mpp)

Note of the change: correcciones de fechas

Last finish stays 2026-12-14.

Changed:

| ID | Task | Finish | Duration |
| --- | --- | --- | --- |
| 27 | **Situación actual** | 2026-07-20 → 2026-07-24 A (+4d) | 21d → 25d |

## Version 6 (saved 2026-07-24, file Tesis.mpp)

Note of the change: Cambios de fecha y agregado de tareas

Last finish 2026-12-14 → 2026-12-19 (+5d).

Added:

| ID | Task | Duration | Start | Finish |
| --- | --- | --- | --- | --- |
| 51 | **Base de Datos Maestra (Nodo Central PostgreSQL)** | 6d | 2026-09-07 | 2026-09-14 |
| 52 | Gestión de Entidades y Registro de Usuarios/Vehículos | 5d | 2026-09-07 | 2026-09-11 |
| 53 | Almacenamiento Centralizado de Trazabilidad e Históricos | 4d | 2026-09-09 | 2026-09-14 |
| 54 | **Base de Datos Local de Inferencia (Nodo de Borde SQLite)** | 8d | 2026-09-07 | 2026-09-16 |
| 55 | Caché Local de Listas Blancas (Consulta de Alta Velocidad) | 5d | 2026-09-07 | 2026-09-11 |
| 56 | Cola de Persistencia Temporal y Encolado para Sincronización Asíncrona | 6d | 2026-09-07 | 2026-09-13 |

Changed:

| ID | Task | Start | Finish | Duration | Complete |
| --- | --- | --- | --- | --- | --- |
| 1 | **Tesis** |  | 2026-12-14 → 2026-12-19 (+5d) | 175d? → 180d? | 51% → 48% |
| 40 | **Configuración de Entornos y Adquisición de Datos** | 2026-08-17 → 2026-08-10 (-7d) |  | 13d → 18d |  |
| 41 | Balanceo de clases para patentes chilenas escasas. | 2026-08-17 → 2026-08-10 (-7d) | 2026-08-19 → 2026-08-12 (-7d) |  |  |
| 42 | Evaluación de herramientas de anotación para YOLOv12. | 2026-08-17 → 2026-08-10 (-7d) | 2026-08-18 → 2026-08-11 (-7d) |  |  |
| 43 | Configuración del entorno local con Docker, PostgreSQL y Node. | 2026-08-17 → 2026-08-12 (-5d) | 2026-08-22 → 2026-08-19 (-3d) |  |  |
| 48 | **Core de IA y Base de Datos Local** |  |  | 16d → 16d? |  |
| 57 | Configuración del script de entrenamiento de YOLOv12s en GPU. | 2026-09-08 → 2026-09-14 (+6d) | 2026-09-11 → 2026-09-17 (+6d) |  |  |
| 58 | Ejecución del entrenamiento del modelo base versión uno punto cero. | 2026-09-12 → 2026-09-21 (+9d) | 2026-09-16 → 2026-09-22 (+6d) | 4d → 2d |  |
| 59 | Módulo de inferencia en Python para placas estáticas. | 2026-09-14 → 2026-09-21 (+7d) | 2026-09-16 → 2026-09-23 (+7d) |  |  |
| 95 | **Documentación Final** |  | 2026-12-13 → 2026-12-18 (+5d) | 11d → 15d |  |
| 100 | Entrega del prototipo funcional y del documento final de tesis. | 2026-12-13 → 2026-12-17 (+4d) | 2026-12-13 → 2026-12-17 (+4d) |  |  |

## Version 7 (saved 2026-07-24, file Trabajo de Titulo.mpp)

Note of the change: incorporación de cronograma general y cronograma detallado, además de correción en numeración del anexo B.

Last finish stays 2026-12-19.

Added:

| ID | Task | Duration | Start | Finish |
| --- | --- | --- | --- | --- |
| 40 | Entrega Informe Trabajo de Titulo 1 | 0d | 2026-07-24 | 2026-07-24 |

Changed:

| ID | Task | Start | Finish | Duration |
| --- | --- | --- | --- | --- |
| 1 | **Tesis** |  |  | 180d? → 180d |
| 49 | **Core de IA y Base de Datos Local** |  |  | 16d? → 16d |
| 101 | Entrega del prototipo funcional y del documento final de tesis. | 2026-12-17 → 2026-12-18 (+1d) | 2026-12-17 → 2026-12-18 (+1d) |  |
